# Assignment 3

Schedule from ProjectLibre, 2019-11-27 to 2020-01-28.

## Calendars

- Standard: Mon-Fri 08:00-12:00, 13:00-17:00; Sat-Sun off.

## Resources

| Resource | Rate |
| --- | --- |
| Unassigned |  |
| Management Team |  |
| Project Manager | 120 |
| Site Lead | 90 |
| Equipment Resources |  |
| Excavator & Driver | 150 |
| Teleporter & Driver | 100 |
| Concrete Pump | 100 |
| Formwork (Reusable) | 400 |
| Labour Resources |  |
| General Operative | 50 |
| Reinforcement Tech | 60 |
| Materials |  |
| Concrete | 75 |
| Steel | 750 |

## Schedule

| ID | WBS | Task | Duration | Start | Finish | Predecessors | Baseline start | Baseline finish | Resources |
| --- | --- | --- | --- | --- | --- | --- | --- | --- | --- |
| 1 | 1 | **Project Resources** | 4427.4e% | 2019-11-27 | 2020-01-28 |  | 2019-11-27 | 2020-01-28 | Project Manager [10%]; Site Lead |
| 2 | 1.1 | **Site Establishment** | 250e% | 2019-11-27 | 2019-11-29 |  | 2019-11-27 | 2019-11-29 |  |
| 3 | 1.1.1 | Clear Site | 250e% | 2019-11-27 | 2019-11-29 |  | 2019-11-27 | 2019-11-29 | Excavator & Driver; General Operative |
| 4 | 1.1.2 | Install Site Offices | 100e% | 2019-11-27 | 2019-11-27 |  | 2019-11-27 | 2019-11-27 | Teleporter & Driver; General Operative |
| 5 | 1.1.3 | Install Welfare Facilities | 50e% | 2019-11-27 | 2019-11-27 |  | 2019-11-27 | 2019-11-27 | Teleporter & Driver; General Operative |
| 6 | 1.2 | **Groundwords** | 1500.8e% | 2019-11-29 | 2019-12-20 | 2 | 2019-11-29 | 2019-12-20 |  |
| 7 | 1.2.1 | Level Site | 300e% | 2019-11-29 | 2019-12-04 |  | 2019-11-29 | 2019-12-04 | Excavator & Driver |
| 8 | 1.2.2 | Install Site Drainage | 400e% | 2019-11-29 | 2019-12-05 |  | 2019-11-29 | 2019-12-05 | Excavator & Driver; General Operative |
| 9 | 1.2.3 | Excavate for Foundations | 300e% | 2019-11-29 | 2019-12-04 |  | 2019-11-29 | 2019-12-04 | Excavator & Driver |
| 10 | 1.2.4 | **Substurcture** | 1200.8e% | 2019-12-04 | 2019-12-20 | 9 | 2019-12-04 | 2019-12-20 |  |
| 11 | 1.2.4.1 | Column Pads | 171.7e% | 2019-12-04 | 2019-12-06 |  | 2019-12-04 | 2019-12-06 | General Operative; Reinforcement Tech; Teleporter & Driver [33%]; Concrete [2375%] |
| 12 | 1.2.4.2 | Columns to Stage 0 | 171.7e% | 2019-12-13 | 2019-12-16 | 11FS+50e% | 2019-12-13 | 2019-12-16 | General Operative; Reinforcement Tech; Teleporter & Driver [33%]; Concrete [450%] |
| 13 | 1.2.4.3 | Backfill | 100e% | 2019-12-16 | 2019-12-17 | 12 | 2019-12-16 | 2019-12-17 | Excavator & Driver |
| 14 | 1.2.4.4 | Ground Floor Slab | 257.5e% | 2019-12-17 | 2019-12-20 | 13 | 2019-12-17 | 2019-12-20 | General Operative; Reinforcement Tech; Teleporter & Driver [33%]; Concrete [7500%] |
| 15 | 1.3 | **Superstructure** | 2676.6e% | 2019-12-20 | 2020-01-28 | 6 | 2019-12-20 | 2020-01-28 |  |
| 16 | 1.3.1 | Columns to Stage 1 | 404e% | 2019-12-20 | 2019-12-26 |  | 2019-12-20 | 2019-12-26 | General Operative; Reinforcement Tech; Teleporter & Driver [33%]; Concrete [1100%] |
| 17 | 1.3.2 | First Floor Supporting Beams | 257.5e% | 2020-01-02 | 2020-01-07 | 16FS+50e% | 2020-01-02 | 2020-01-07 | General Operative; Reinforcement Tech; Teleporter & Driver [33%]; Concrete [3500%] |
| 18 | 1.3.3 | First Floor Slab | 257.5e% | 2020-01-02 | 2020-01-07 | 16FS+50e% | 2020-01-02 | 2020-01-07 | General Operative; Reinforcement Tech; Teleporter & Driver [33%]; Concrete [4400%] |
| 19 | 1.3.4 | Columns to Stage 2 | 171.7e% | 2020-01-14 | 2020-01-15 | 18FS+50e% | 2020-01-14 | 2020-01-15 | General Operative; Reinforcement Tech; Teleporter & Driver [33%]; Concrete [1350%] |
| 20 | 1.3.5 | Roof Supporting Beams | 257.5e% | 2020-01-14 | 2020-01-16 | 18FS+50e% | 2020-01-14 | 2020-01-16 | General Operative; Reinforcement Tech; Teleporter & Driver [33%]; Concrete [3500%] |
| 21 | 1.3.6 | Roof Slab | 257.5e% | 2020-01-23 | 2020-01-28 | 20FS+50e% | 2020-01-23 | 2020-01-28 | General Operative; Reinforcement Tech; Teleporter & Driver [33%]; Concrete [4400%] |
